How a schedule from MS Project changed from version to version. A marks actual dates.

## Version 1 (saved 2020-04-10)

Note of the change: message

| ID | WBS | Task | Duration | Start | Finish | Predecessors | Total float |
| --- | --- | --- | --- | --- | --- | --- | --- |
| 1 | 1 | **启动** | 3d | 2020-03-27 | 2020-03-31 |  |  |
| 2 |  | 组建核心团队 | 1d | 2020-03-27 | 2020-03-27 |  |  |
| 3 |  | 干系人分析 | 1d | 2020-03-27 | 2020-03-27 |  |  |
| 4 |  | 里程碑计划 | 1d | 2020-03-27 | 2020-03-27 |  |  |
| 5 |  | 制定项目章程 | 1d | 2020-03-30 | 2020-03-30 | 2, 3, 4 |  |
| 6 |  | 项目启动大会 | 1d | 2020-03-31 | 2020-03-31 | 5 |  |
| 7 | 2 | **规划** | 17d | 2020-04-01 | 2020-04-23 |  |  |
| 8 | 2.1 | **规划范围** | 6d | 2020-04-01 | 2020-04-08 |  |  |
| 9 |  | 制定需求说明书 | 1d | 2020-04-01 | 2020-04-01 | 6 |  |
| 10 |  | 界面设计 | 2d | 2020-04-02 | 2020-04-03 | 9 |  |
| 11 |  | 详细设计说明书 | 1d | 2020-04-02 | 2020-04-02 | 9 |  |
| 12 |  | 项目范围说明书 | 1d | 2020-04-02 | 2020-04-02 | 9 |  |
| 13 |  | 创建WBS | 3d | 2020-04-06 | 2020-04-08 | 10, 11, 12 |  |
| 14 |  | 形成范围基准 | 2d | 2020-04-09 | 2020-04-10 | 13 |  |
| 15 | 2.2 | **规划时间** | 6d | 2020-04-07 | 2020-04-14 |  |  |
| 16 |  | 排列工作包顺序 | 1d | 2020-04-06 | 2020-04-06 | 14 |  |
| 17 |  | 估算资源 | 2d | 2020-04-07 | 2020-04-08 | 16 |  |
| 18 |  | 估算持续时间 | 2d | 2020-04-09 | 2020-04-10 | 17 |  |
| 19 |  | 制定进度计划 | 1d | 2020-04-13 | 2020-04-13 | 18 |  |
| 20 |  | 形成进度基准 | 1d | 2020-04-14 | 2020-04-14 | 19 |  |
| 21 | 2.3 | **规划成本** | 3d | 2020-04-15 | 2020-04-17 |  |  |
| 22 |  | 项目成本估算 | 3d | 2020-04-15 | 2020-04-17 | 20 |  |
| 23 |  | 项目预算 | 2d | 2020-04-16 | 2020-04-17 | 22 |  |
| 24 |  | 形成范围基准 | 1d | 2020-04-17 | 2020-04-17 | 23 |  |
| 25 | 2.4 | **规划质量** | 7d | 2020-04-18 | 2020-04-27 |  |  |
| 26 |  | 制定测试计划 | 2d | 2020-04-13 | 2020-04-14 | 14 |  |
| 27 |  | 制定测试用例 | 6d | 2020-04-15 | 2020-04-22 | 26 |  |
| 28 | 2.5 | **规划人力资源** | 3d | 2020-04-20 | 2020-04-22 |  |  |
| 29 |  | 制定人力资源计划 | 2d | 2020-04-09 | 2020-04-10 | 17 |  |
| 30 |  | 制定人员配备管理计划 | 2d | 2020-04-13 | 2020-04-14 | 29 |  |
| 31 | 2.6 | **规划沟通** | 3d | 2020-04-15 | 2020-04-17 |  |  |
| 32 |  | 制定沟通管理计划 | 2d | 2020-04-15 | 2020-04-16 | 30 |  |
| 33 | 2.7 | **规划采购** | 6d | 2020-04-17 | 2020-04-24 |  |  |
| 34 |  | 自制外购分析 | 2d | 2020-04-09 | 2020-04-10 | 17 |  |
| 35 |  | 制定采购文件 | 5d | 2020-04-13 | 2020-04-17 | 34 |  |
| 36 | 2.8 | **规划风险** | 3d | 2020-04-24 | 2020-04-28 |  |  |
| 37 |  | 识别风险 | 1d | 2020-04-28 | 2020-04-28 | 15, 21, 25, 28 |  |
| 38 |  | 风险分析 | 1d | 2020-04-29 | 2020-04-29 | 37 |  |
| 39 |  | 制定风险登记册 | 1d | 2020-04-30 | 2020-04-30 | 38 |  |
| 40 |  | 规划整合 | 1d | 2020-05-01 | 2020-05-01 | 39 |  |
| 41 | 3 | **执行与监控** | 21d? | 2020-05-02 | 2020-05-29 |  |  |
| 42 |  | 组建项目团队 | 3d | 2020-04-24 | 2020-04-28 | 7 |  |
| 43 | 3.2 | **项目执行** | 9d | 2020-05-02 | 2020-05-13 |  |  |
| 44 | 3.2.1 | **首页模块** | 9d | 2020-05-02 | 2020-05-13 |  |  |
| 45 |  | 个人推荐 | 4d | 2020-04-29 | 2020-05-04 | 42 |  |
| 46 |  | 轮播图 | 1d | 2020-05-02 | 2020-05-02 |  |  |
| 47 |  | 小模块 | 5d | 2020-05-02 | 2020-05-07 |  |  |
| 48 | 3.2.2 | **医院模块** | 3d | 2020-05-02 | 2020-05-05 |  |  |
| 49 |  | 地图 | 2d | 2020-05-02 | 2020-05-04 |  |  |
| 50 |  | 搜索 | 1d | 2020-05-03 | 2020-05-03 |  |  |
| 51 | 3.2.3 | **心率模块** | 9d | 2020-05-04 | 2020-05-14 |  |  |
| 52 |  | 测心率 | 5d | 2020-04-29 | 2020-05-05 | 42 |  |
| 53 |  | 显示数据 | 6d | 2020-05-06 | 2020-05-13 | 52 |  |
| 54 | 3.2.4 | **交流模块** | 6d | 2020-05-14 | 2020-05-21 |  |  |
| 55 |  | 发布问题 | 4d | 2020-05-14 | 2020-05-19 | 42 |  |
| 56 |  | 回复 | 2d | 2020-05-05 | 2020-05-06 | 55 |  |
| 57 | 3.2.5 | **我的模块** | 10d | 2020-05-02 | 2020-05-14 |  |  |
| 58 |  | 登录 | 6d | 2020-05-02 | 2020-05-08 | 42 |  |
| 59 |  | 个人信息 | 1d | 2020-05-09 | 2020-05-09 | 58 |  |
| 60 |  | 身体数据 | 1d | 2020-05-06 | 2020-05-06 | 52 |  |
| 61 |  | 最近阅读 | 2d | 2020-05-07 | 2020-05-08 |  |  |
| 62 |  | 设置 | 1d | 2020-05-02 | 2020-05-02 |  |  |
| 63 |  | 收藏 | 2d | 2020-05-06 | 2020-05-07 |  |  |
| 64 | 3.3 | **项目监控** | 3d | 2020-05-22 | 2020-05-26 |  |  |
| 65 |  | 各项指标监控 | 1d | 2020-05-22 | 2020-05-22 | 42 | 0d |
| 66 |  | 监控评审 | 1d | 2020-05-23 | 2020-05-23 | 65 |  |
| 67 |  | 变更评审 | 1d | 2020-05-24 | 2020-05-24 | 66 |  |
| 68 |  | 例会 | 1d | 2020-05-25 | 2020-05-25 | 42 |  |
| 69 | 3.4 | **管理干系人** | 1d | 2020-05-25 | 2020-05-25 |  |  |
| 70 |  | 发布项目信息 | 1d | 2020-04-29 | 2020-04-29 | 42 |  |

| ID | WBS | Task | Duration | Start | Finish | Predecessors |
| --- | --- | --- | --- | --- | --- | --- |
| 71 |  | 报告监控指标 | 1d | 2020-04-29 | 2020-04-29 | 42 |
| 72 |  | 干系人沟通 | 1d | 2020-05-25 | 2020-05-25 |  |
| 73 | 3.5 | **团队建设** | 1d | 2020-05-26 | 2020-05-26 |  |
| 74 |  | 培训 | 1d | 2020-05-26 | 2020-05-26 | 42 |
| 75 |  | 娱乐活动 | 1d | 2020-05-26 | 2020-05-26 | 42 |
| 76 |  | 沟通 | 1d | 2020-05-26 | 2020-05-26 | 42 |
| 77 |  | 采购 | 20d | 2020-05-27 | 2020-06-23 | 42 |
| 78 |  | 项目验收 | 1d | 2020-05-14 | 2020-05-14 | 43 |
| 79 | 4 | **收尾** | 1d | 2020-05-28 | 2020-05-28 |  |
| 80 |  | 项目终验 | 1d | 2020-05-15 | 2020-05-15 | 78 |
| 81 |  | 结束采购 | 1d | 2020-05-15 | 2020-05-15 | 78 |
| 82 |  | 项目内部收尾 | 1d | 2020-05-15 | 2020-05-15 | 78 |

## Version 2 (saved 2020-04-10)

Note of the change: message

Last finish 2020-06-23 → 2020-07-07 (+14d).

Changed:

| ID | Task | Start | Finish | Duration |
| --- | --- | --- | --- | --- |
| 2 | 组建核心团队 |  | 2020-03-27 → 2020-04-01 (+5d) | 1d → 4d |
| 3 | 干系人分析 | 2020-03-27 → 2020-04-03 (+7d) | 2020-03-27 → 2020-04-03 (+7d) |  |
| 5 | 制定项目章程 | 2020-03-30 → 2020-04-23 (+24d) | 2020-03-30 → 2020-04-23 (+24d) |  |
| 6 | 项目启动大会 | 2020-03-31 → 2020-04-24 (+24d) | 2020-03-31 → 2020-05-04 (+34d) | 1d → 7d |
| 13 | 创建WBS | 2020-04-06 → 2020-04-20 (+14d) | 2020-04-08 → 2020-04-22 (+14d) |  |
| 14 | 形成范围基准 | 2020-04-09 → 2020-05-05 (+26d) | 2020-04-10 → 2020-05-06 (+26d) |  |
| 18 | 估算持续时间 | 2020-04-09 → 2020-05-07 (+28d) | 2020-04-10 → 2020-05-08 (+28d) |  |
| 19 | 制定进度计划 | 2020-04-13 → 2020-05-11 (+28d) | 2020-04-13 → 2020-05-11 (+28d) |  |
| 20 | 形成进度基准 | 2020-04-14 → 2020-05-12 (+28d) | 2020-04-14 → 2020-05-12 (+28d) |  |
| 22 | 项目成本估算 | 2020-04-15 → 2020-05-13 (+28d) | 2020-04-17 → 2020-05-18 (+31d) |  |
| 23 | 项目预算 | 2020-04-16 → 2020-05-19 (+33d) | 2020-04-17 → 2020-05-20 (+33d) |  |
| 24 | 形成范围基准 | 2020-04-17 → 2020-05-21 (+34d) | 2020-04-17 → 2020-05-21 (+34d) |  |
| 29 | 制定人力资源计划 | 2020-04-09 → 2020-05-26 (+47d) | 2020-04-10 → 2020-06-24 (+75d) |  |
| 30 | 制定人员配备管理计划 | 2020-04-13 → 2020-06-25 (+73d) | 2020-04-14 → 2020-06-26 (+73d) |  |
| 32 | 制定沟通管理计划 | 2020-04-15 → 2020-06-29 (+75d) | 2020-04-16 → 2020-06-30 (+75d) |  |
| 37 | 识别风险 | 2020-04-28 → 2020-07-01 (+64d) | 2020-04-28 → 2020-07-01 (+64d) |  |
| 38 | 风险分析 | 2020-04-29 → 2020-07-02 (+64d) | 2020-04-29 → 2020-07-02 (+64d) |  |
| 45 | 个人推荐 |  | 2020-05-04 → 2020-05-08 (+4d) |  |
| 46 | 轮播图 | 2020-05-02 → 2020-05-11 (+9d) | 2020-05-02 → 2020-05-11 (+9d) |  |
| 47 | 小模块 | 2020-05-02 → 2020-05-04 (+2d) | 2020-05-07 → 2020-05-12 (+5d) |  |
| 49 | 地图 | 2020-05-02 → 2020-05-04 (+2d) | 2020-05-04 → 2020-05-05 (+1d) |  |
| 50 | 搜索 | 2020-05-03 → 2020-05-06 (+3d) | 2020-05-03 → 2020-05-06 (+3d) |  |
| 58 | 登录 | 2020-05-02 → 2020-05-04 (+2d) | 2020-05-08 → 2020-05-14 (+6d) |  |
| 59 | 个人信息 | 2020-05-09 → 2020-05-15 (+6d) | 2020-05-09 → 2020-05-15 (+6d) |  |
| 60 | 身体数据 | 2020-05-06 → 2020-05-18 (+12d) | 2020-05-06 → 2020-05-18 (+12d) |  |
| 61 | 最近阅读 | 2020-05-07 → 2020-05-08 (+1d) | 2020-05-08 → 2020-05-19 (+11d) |  |
| 62 | 设置 | 2020-05-02 → 2020-05-20 (+18d) | 2020-05-02 → 2020-05-20 (+18d) |  |
| 66 | 监控评审 | 2020-05-23 → 2020-05-25 (+2d) | 2020-05-23 → 2020-07-03 (+41d) | 1d → 30d |
| 67 | 变更评审 | 2020-05-24 → 2020-07-06 (+43d) | 2020-05-24 → 2020-07-06 (+43d) |  |
| 70 | 发布项目信息 | 2020-04-29 → 2020-07-07 (+69d) | 2020-04-29 → 2020-07-07 (+69d) |  |
| 74 | 培训 | 2020-05-26 → 2020-05-27 (+1d) | 2020-05-26 → 2020-05-27 (+1d) |  |
| 75 | 娱乐活动 | 2020-05-26 → 2020-05-28 (+2d) | 2020-05-26 → 2020-05-28 (+2d) |  |
| 80 | 项目终验 |  | 2020-05-15 → 2020-05-18 (+3d) | 1d → 2d |
